# CTRP2-ProjectSchedule

How a schedule from MS Project changed from version to version. A marks actual dates.

## Version 1 (saved 2011-11-29)

Note of the change: tag 2.5.0_M17

| ID | WBS | Task | Duration | Start | Finish | Predecessors | Complete | Total float | Constraint |
| --- | --- | --- | --- | --- | --- | --- | --- | --- | --- |
| 1 | 1 | **CAARRAY 2.x** | 324d | 2011-08-10 A | 2012-11-05 |  | 58% | 0d | start no earlier than 2011-08-03 |
| 2 | 1.1 | **2.4.1** | 38d | 2011-08-10 A | 2011-09-30 |  | 99% | 0d | start no earlier than 2011-08-10 |
| 3 | 1.1.1 | **2.4.1 RC6** | 25d | 2011-08-10 A | 2011-09-13 |  | 99% | 0d |  |
| 4 |  | caArray Importer: Regression test on local tier | 20d | 2011-08-10 A | 2011-09-06 A |  | 100% |  |  |
| 5 |  | caArray Importer: Test import on local tier | 20d | 2011-08-10 A | 2011-09-06 A |  | 100% |  |  |
| 6 |  | API Partner Testing on STAGE | 20d | 2011-08-10 A | 2011-09-06 A |  | 100% |  |  |
| 7 |  | Section 508 compliance: Run scan and issue-manage. | 20d | 2011-08-10 A | 2011-09-06 A |  | 100% |  |  |
| 8 |  | Write Grid client to get expt and hyb counts for Ken Buetow | 20d | 2011-08-10 A | 2011-09-06 A |  | 100% |  |  |
| 9 |  | Write and test QTP automated script to load TCGA data | 20d | 2011-08-10 A | 2011-09-06 A |  | 100% |  |  |
| 10 |  | Bug fix for ARRAY-2059 that is a blocker for the TCGA data load | 20d | 2011-08-10 A | 2011-09-06 A |  | 100% |  |  |
| 11 |  | Section 508 compliance: Fix ARRAY-1911 to get 90% score | 20d | 2011-08-10 A | 2011-09-06 A |  | 100% |  |  |
| 12 |  | Decide on solution to TCGA data load issue | 20d | 2011-08-10 A | 2011-09-06 A |  | 100% |  |  |
| 13 |  | Bug fix for ARRAY-2055 | 20d | 2011-08-10 A | 2011-09-06 A |  | 100% |  |  |
| 14 |  | Temporary bug fix for ARRAY-2053 | 25d | 2011-08-10 A | 2011-09-13 A |  | 100% |  |  |
| 15 |  | Test bug fixes on QA tier | 25d | 2011-08-10 A | 2011-09-13 A |  | 100% |  |  |
| 16 | 1.1.2 | **2.4.1 Deployment** | 13d | 2011-09-14 A | 2011-09-30 | 3 | 99% | 0d |  |
| 17 |  | Regression testing on QA tier | 5d | 2011-09-14 A | 2011-09-20 A |  | 100% |  |  |
| 18 |  | Test bug fixes on STAGE | 5d | 2011-09-14 A | 2011-09-20 A |  | 100% |  |  |
| 19 |  | Regression testing on STAGE | 5d | 2011-09-21 A | 2011-09-27 A | 17 | 100% |  |  |
| 20 |  | Upload Release Artifacts | 2d | 2011-09-21 A | 2011-09-22 A | 17 | 100% |  |  |
| 21 |  | App Scan on STAGE | 3d | 2011-09-21 A | 2011-09-23 A | 17 | 100% |  |  |
| 22 |  | Add README_caArray_and_UPT.txt | 1d | 2011-09-26 A | 2011-09-26 A | 21 | 100% |  |  |
| 23 |  | Deploy to PRODUCTION | 5d | 2011-09-26 A | 2011-09-30 A | 22 | 100% |  |  |
| 24 |  | RELEASE 2.4.1 | 0d | 2011-09-30 A | 2011-09-30 A | 23 | 100% |  |  |
| 25 | 1.3 | **2.5.0 (rough LOEs)** | 149d | 2011-09-14 A | 2012-04-09 | 3 | 43% | 0d |  |
| 26 |  | Merge in plug-in arch, file system storage, Jboss5 and get local CI build working (ARRAY-1804, ARRAY-1595, ARRAY-1896) | 10d | 2011-09-14 A | 2011-09-27 A |  | 100% |  |  |
| 27 |  | BDALite: Migrate caArray build from Ivy to Nexus (ARRAY-2073) | 7d | 2011-09-28 A | 2011-10-06 A | 26 | 100% |  |  |
| 28 |  | BDALite: Artifact configuration at build time and PTE form (ARRAY-2067, ARRAY-1967) | 7d | 2011-09-28 A | 2011-10-06 A | 26 | 100% |  |  |
| 29 |  | BDALite: Migrate BDA build from Ivy to Nexus (ARRAY-2085) | 15d | 2011-10-07 A | 2011-10-27 A | 27 | 100% |  |  |
| 30 |  | BDALite: Migrate to AntHill Pro 3 - Prerequisites (ARRAY-2103, ARRAY-2121) | 15d | 2011-10-07 A | 2011-10-27 A | 28 | 100% |  |  |
| 31 |  | Curation Tier upgrade to 2.4.1 | 3d | 2011-10-28 A | 2011-11-01 A | 29 | 100% |  |  |
| 32 |  | Merge in 2.4.1 fixes into 2.5.0 (ARRAY-2069) | 5d | 2011-10-28 A | 2011-11-03 A | 29 | 100% |  |  |
| 33 |  | Get CI build tested and working (ARRAY-2021, 2120, 2122, 2123, 2064, 2122, 1960, 2152) | 10d | 2011-11-04 A | 2011-11-17 A | 32 | 100% |  |  |
| 34 |  | Jboss 5.1 / Java 6 upgrade - Fix Installer (ARRAY-1567, 2124, 2125, 2144, 2145, 2141, 2142, 2147, 2148) | 5d | 2011-11-11 A | 2011-11-17 A | 33 | 100% |  |  |
| 35 |  | File system storage of raw files (transaction spanning DB and filesystem) (ARRAY-1752) | 5d | 2011-11-18 A | 2011-11-24 A | 34 | 100% |  |  |
| 36 |  | Xenoline: Data analysis and meetings | 2d | 2011-11-18 A | 2011-11-21 A | 34 | 100% |  |  |
| 37 |  | TRANSCEND: Requirements meetings and test data set-up | 5d | 2011-11-18 A | 2011-11-24 | 34 | 50% | 95d |  |
| 38 |  | Jboss 5.1 / Java 6 upgrade - Test 2.4.x to 2.5.0 migration path (ARRAY-2126, ARRAY-2127) | 5d | 2011-11-18 A | 2011-11-24 | 34 | 50% | 92.5d |  |
| 39 |  | Fix bugs discovered during regression testing (ARRAY-2165,2166,2167,2168,2169) | 7d | 2011-11-25 A | 2011-12-05 | 38 | 36% | 90d |  |
| 40 |  | BDALite: AHP 3 prerequisite: Standalone liquibase upgrades (ARRAY-2105) | 7d | 2011-11-25 | 2011-12-05 | 35 |  | 0d |  |
| 41 |  | External Dependency: AntHill Pro 3 Tracks set up by Systems team (ARRAY-1968) | 0d | 2011-12-05 | 2011-12-05 | 30, 40 |  | 85d |  |
| 42 |  | Jboss 5.1 / Java 6 upgrade - Test 2.5.0 on NCI tiers (ARRAY-1809) | 5d | 2011-12-06 | 2011-12-12 | 41 |  | 85d |  |
| 43 |  | Allow user to point to files rather than uploading/transferring (ARRAY-2005) | 5d | 2011-12-06 | 2011-12-12 | 40 |  | 85d |  |
| 44 |  | Split imports into multiple transactions (ARRAY-1403) | 30d | 2011-12-06 | 2012-01-16 | 40 |  | 0d |  |
| 45 |  | Resumable uploads (ARRAY-1899, ARRAY-1627) | 20d | 2012-01-17 | 2012-02-13 | 44 |  | 0d |  |
| 46 |  | Backup and replication for file system - NCI tiers and local installer documentation (ARRAY-1809) | 5d | 2012-02-14 | 2012-02-20 | 45 |  | 35d |  |
| 47 |  | API (CQL) changes to account for file system storage (ARRAY-1806, ARRAY-1391) | 5d | 2012-02-14 | 2012-02-20 | 45 |  | 0d |  |
| 48 |  | Bug fixes | 25d | 2012-02-21 | 2012-03-26 | 47 |  | 0d |  |
| 49 |  | Deployment overhead | 10d | 2012-03-27 | 2012-04-09 | 48 |  | 0d |  |
| 50 | 1.4 | **PRODUCT BACKLOG (rough LOEs)** | 150d | 2012-04-10 | 2012-11-05 | 25 |  | 0d |  |
| 51 | 1.4.1 | **Grid Security (TRANSCEND)** | 40d | 2012-04-10 | 2012-06-04 |  |  | 0d |  |
| 52 |  | ARRAY-1463 - Login with caGrid account | 10d | 2012-04-10 | 2012-04-23 |  |  | 0d |  |
| 53 |  | ARRAY-1928 - Migrate CSM to Grid accounts | 5d | 2012-04-24 | 2012-04-30 | 52 |  | 0d |  |
| 54 |  | ARRAY-1353 - Grid authentication in remote Java API | 10d | 2012-05-01 | 2012-05-14 | 53 |  | 0d |  |
| 55 |  | ARRAY-1462 - Installer/build infrastructure for secure Grid | 15d | 2012-05-15 | 2012-06-04 | 54 |  | 0d |  |
| 56 |  | ARRAY-1929 - Grid Grouper (NICE TO HAVE) | 0d | 2012-06-04 | 2012-06-04 | 55 |  | 0d |  |
| 57 |  | ARRAY-1472 - Bulk migration of LDAP to Grid (NICE TO HAVE) | 0d | 2012-06-04 | 2012-06-04 | 56 |  | 0d |  |
| 58 | 1.4.2 | **Single Sign-on (TRANSCEND)** | 20d | 2012-06-05 | 2012-07-02 | 51 |  | 0d |  |
| 59 |  | ARRAY-1930 | 20d | 2012-06-05 | 2012-07-02 |  |  | 0d |  |
| 60 | 1.4.3 | **Audit Trail (TRANSCEND)** | 20d | 2012-07-03 | 2012-07-30 | 58 |  | 0d |  |
| 61 |  | ARRAY-1931 - Sample deletions and data imports | 10d | 2012-07-03 | 2012-07-16 |  |  | 0d |  |
| 62 |  | ARRAY-1933 - Log visibility to Data Owner | 5d | 2012-07-17 | 2012-07-23 | 61 |  | 0d |  |
| 63 |  | ARRAY-1932 - Publish log | 5d | 2012-07-24 | 2012-07-30 | 62 |  | 0d |  |
| 64 | 1.4.4 | **File-level permissions for role-based security (TRANSCEND)** | 20d | 2012-07-31 | 2012-08-27 | 60 |  | 0d |  |
| 65 |  | ARRAY-1938 | 20d | 2012-07-31 | 2012-08-27 |  |  | 0d |  |
| 66 | 1.4.5 | **Maintenance and Bug Fixes** | 10d | 2012-08-28 | 2012-09-10 | 64 |  | 0d |  |
| 67 |  | Collaborator Group Defect | 10d | 2012-08-28 | 2012-09-10 |  |  | 0d |  |
| 68 |  | Expand unparsed file types (NICE TO HAVE) | 0d | 2012-09-10 | 2012-09-10 | 67 |  | 0d |  |
| 69 |  | IE 8 UI bugs (NICE TO HAVE) | 0d | 2012-09-10 | 2012-09-10 | 68 |  | 0d |  |
| 70 |  | MAGE-TAB v1.1 support (NICE TO HAVE) | 0d | 2012-09-10 | 2012-09-10 | 69 |  | 0d |  |

| ID | WBS | Task | Duration | Start | Finish | Predecessors | Total float |
| --- | --- | --- | --- | --- | --- | --- | --- |
| 71 |  | Clean up duplicate terms (NICE TO HAVE) | 0d | 2012-09-10 | 2012-09-10 | 70 | 0d |
| 72 |  | Import verification to prevent unintentional biomaterial/term creation (NICE TO HAVE) | 0d | 2012-09-10 | 2012-09-10 | 71 | 0d |
| 73 |  | Prevent multiple hybs to 1 file association (NICE TO HAVE) | 0d | 2012-09-10 | 2012-09-10 | 72 | 0d |
| 74 |  | Fix SDRF export of multiple derived data file columns (NICE TO HAVE) | 0d | 2012-09-10 | 2012-09-10 | 73 | 0d |
| 75 |  | Fix LSIDs for unparsed array designs (NICE TO HAVE) | 0d | 2012-09-10 | 2012-09-10 | 74 | 0d |
| 76 | 1.4.6 | **Release Overhead for TRANSCEND release** | 40d | 2012-09-11 | 2012-11-05 | 66 | 0d |
| 77 |  | Bug fixes | 30d | 2012-09-11 | 2012-10-22 |  | 0d |
| 78 |  | Deployment overhead | 10d | 2012-10-23 | 2012-11-05 | 77 | 0d |

## Version 2 (saved 2012-06-19)

Note of the change: Tagging 2.5.0 M32 release.

Last finish 2012-11-05 → 2012-07-17 (-111d). Complete tasks 31 → 155.

Added:

| ID | Task | Duration | Start | Finish | Predecessors | Constraint | Resources |
| --- | --- | --- | --- | --- | --- | --- | --- |
| 26 | **Iterations M15-M17** | 52d | 2011-09-14 A | 2011-11-24 |  |  | Andrew; KK; Quy; Rashmi |
| 40 | **Iteration M18** | 13d | 2011-11-25 A | 2011-12-13 A | 39 |  |  |
| 43 | Orphaned experiments: Blocking issue for user (ARRAY-2183) (New) | 5d | 2011-11-25 A | 2011-12-01 A |  |  | Rashmi |
| 44 | Design for large import splitting into multiple transactions (ARRAY-2146) | 5d | 2011-11-25 A | 2011-12-01 A |  |  | Todd; Rashmi |
| 45 | Bug fixes (ARRAY-2167,2149) | 5d | 2011-12-07 A | 2011-12-13 A | 42 |  | KK |
| 46 | Design for remote file locations (ARRAY-2156) | 2d | 2011-12-12 A | 2011-12-13 A |  | start no earlier than 2011-12-12 | Todd |
| 47 | QA testing | 10d | 2011-11-25 A | 2011-12-08 A |  |  | Quy |
| 48 | BDALite: AHP 3: Database properties at build time (ARRAY-2197) (New) | 1d | 2011-12-07 A | 2011-12-07 A | 42 |  | Systems; KK |
| 49 | **Iteration M19** | 9d | 2011-12-14 A | 2011-12-27 A | 40 |  |  |
| 50 | Bug fixes for new Agilent import problems (ARRAY-2198, ARRAY-2203) (New) | 5d | 2011-12-14 A | 2011-12-20 A |  |  | KK; Todd |
| 51 | ARRAY-2159 - Splitting Imports: Utility classes to break up a MAGE-TAB set | 5d | 2011-12-14 A | 2011-12-20 A |  |  | KK; Todd |
| 52 | ARRAY-2187 - Splitting Imports: MAGE-TAB Transaction Set model and DAO | 4d | 2011-12-21 A | 2011-12-27 A | 51 |  | KK; Todd |
| 53 | ARRAY-2205 - BDALite: AHP3 troubleshooting (New) | 1d | 2011-12-14 A | 2011-12-14 A |  |  | KK; Systems |
| 54 | QA testing | 5d | 2011-12-14 A | 2011-12-20 A |  |  | Quy |
| 55 | Discuss TRANSCEND Data Authorization approach with ESSRT | 1d | 2011-12-14 A | 2011-12-14 A |  |  | Rashmi |
| 56 | **Iteration M20** | 9d | 2011-12-28 A | 2012-01-10 A | 49 |  |  |
| 57 | ARRAY-2217 - BDALite: Update bda-lite:database:update:prepare target to include the "environment" property (New) | 2d | 2011-12-28 A | 2011-12-29 A |  |  | KK; Systems |
| 58 | ARRAY-1968 - BDALite: AHP 3 build track troubleshooting (New) | 5d | 2011-12-30 A | 2012-01-06 A | 57 |  | KK; Systems |
| 59 | ARRAY-2188 - Splitting Imports: New state model | 4d | 2011-12-28 A | 2012-01-03 A |  |  | KK; Todd |
| 60 | Bug fixes for Illumina BGX, MageTabExporter and AssayType display (ARRAY-2202, 2181, 2204) (New) | 6d | 2011-12-28 A | 2012-01-05 A |  |  | KK; Todd |
| 61 | ARRAY-2208 - Improvement: Reduce CI build time for import tests | 2d | 2012-01-09 A | 2012-01-10 A | 58 |  | KK; Todd |
| 62 | QA Test Suite updates for 2.5.0: Splitting Imports (ARRAY-2206) | 5d | 2011-12-28 A | 2012-01-04 A |  |  | Quy |
| 63 | ARRAY-2219 - Onboard new software engineers | 5d | 2011-12-28 A | 2012-01-04 A |  |  | Paul; Winston; KK; Todd |
| 64 | **Iteration M21** | 9d | 2012-01-11 A | 2012-01-24 | 56 |  |  |
| 65 | ARRAY-2189 - Splitting Imports: Validate and Import transactions | 3d | 2012-01-11 A | 2012-01-13 A |  |  | KK; Todd; Paul; Winston |
| 66 | ARRAY-2190 - Splitting Imports: Modify import service to perform the split | 5d | 2012-01-11 A | 2012-01-18 A |  |  | KK; Todd; Paul; Winston |
| 67 | ARRAY-2199 - Splitting Imports: Hide split files from user | 4d | 2012-01-19 A | 2012-01-24 A | 66 |  | KK; Todd; Paul; Winston |
| 68 | ARRAY-2191 - Splitting Imports: Support SDRF where multiple rows reference the same data file | 1d | 2012-01-19 A | 2012-01-19 A | 66 |  | KK; Todd; Paul; Winston |
| 69 | ARRAY-2232 - Splitting Imports: Make Job Queue child-aware (New) | 3d | 2012-01-19 A | 2012-01-23 A | 66 |  | KK; Todd; Paul; Winston |
| 70 | Investigate Technology for Improved Upload (ARRAY-1899) - Pros and cons | 3d | 2012-01-11 A | 2012-01-13 A |  |  | Paul |
| 71 | ARRAY-2005 - Allow remote locations for native files (Won't Fix) | 1d | 2012-01-11 A | 2012-01-11 A |  |  | Rashmi |
| 72 | ARRAY-2214 - Bug: Experiments disappear after PROD-to-STAGE database copy. (New) | 2d | 2012-01-11 A | 2012-01-12 A |  |  | Systems; KK; Quy |
| 73 | ARRAY-2252 - Bug: AgilentFileImportIntegrationTest fails on trunk (New) | 3d | 2012-01-11 A | 2012-01-13 A |  |  | KK; Todd; Paul; Winston |
| 74 | ARRAY-2236,2237,2240 - Improvement: Reduce build time for Illumina and Affy validation/service tests | 1d | 2012-01-11 A | 2012-01-11 A |  |  | KK; Todd; Paul; Winston |
| 75 | ARRAY-2170 - Support: Build documentation/README out of date | 2d | 2012-01-11 A | 2012-01-12 A |  |  | Winston |
| 76 | ARRAY-2230 - Support: Initial investigation into building from 2.4.0 source (New) | 2d | 2012-01-11 A | 2012-01-12 A |  |  | KK |
| 77 | ARRAY-2250 - BDALite: AHP3 build of QA-VM failed due to missing Gforge library (New) | 1d | 2012-01-11 A | 2012-01-11 A |  |  | KK; Todd |
| 78 | ARRAY-2227 - BDALite: Move caArray-QA to AHP3 build/deploy track (New) | 1d | 2012-01-24 A | 2012-01-24 A | 81 |  | Quy; Systems; KK |
| 79 | ARRAY-2260 - BDALite: AHP3 database upgrade fails on QA-VM (New) | 2d | 2012-01-12 A | 2012-01-13 A | 77 |  | Systems; KK; Quy |
| 80 | ARRAY-2261 - BDALite: Cannot build from trunk via AHP3 on QA-VM (New) | 2d | 2012-01-17 A | 2012-01-18 A | 79 |  | Systems; KK; Quy |
| 81 | ARRAY-2262 - BDALite: Could not login to QA-VM after AHP3 build | 3d | 2012-01-19 A | 2012-01-23 A | 80 |  | Systems; KK; Quy |
| 82 | QA Test Plan Review (internal) | 2d | 2012-01-11 A | 2012-01-12 A |  |  | Quy |
| 83 | Coordinate release dates for caArray and caIntegrator | 1d | 2012-01-24 A | 2012-01-24 |  |  | Rashmi; caIntegrator Team; Juli; Mervi; JJ; Deb; Larry |
| 84 | **Iteration M22** | 10d | 2012-01-25 A | 2012-02-07 A | 64 |  |  |
| 85 | ARRAY-2270 - Clarify TRANSCEND security architecture with ESSRT. | 1d | 2012-01-25 A | 2012-01-25 A |  |  | Rashmi; Santosh |
| 86 | Prototype IE browser fallback for Improved Upload | 3d | 2012-01-25 A | 2012-01-27 A |  |  | Paul |
| 87 | ARRAY-2253 - Bug: caIntegrator cannot retrieve parsed data from caArray with Jboss 5 (New) | 2d | 2012-01-25 A | 2012-01-26 A |  |  | KK; Todd; Paul; Quy; caIntegrator Team |
| 88 | ARRAY-2231 - Bug: Experiment inconsistencies between Curation and PROD (New) | 1d | 2012-01-25 A | 2012-01-25 A |  |  | KK; Todd; Paul; Quy |
| 89 | ARRAY-2192 - Splitting Imports: Stop parent import job from Job Queue | 5d | 2012-01-25 A | 2012-01-31 A |  |  | KK; Todd; Paul; Quy |
| 90 | ARRAY-2193 - Splitting Imports: Resume of cancelled import job | 5d | 2012-02-01 A | 2012-02-07 A | 89 |  | KK; Todd; Paul; Quy |
| 91 | ARRAY-2194 - Splitting Imports: Resume of failed import job with problematic data files | 2d | 2012-01-25 A | 2012-01-26 A |  |  | KK; Todd; Paul; Quy |
| 92 | ARRAY-2195 - Splitting Imports: Resume of failed import job with problematic SDRF | 2d | 2012-01-25 A | 2012-01-26 A |  |  | KK; Todd; Paul; Quy |
| 93 | ARRAY-2233 - Splitting Imports: Support 2-colour designs | 1d | 2012-01-25 A | 2012-01-25 A |  |  | KK; Todd; Paul; Quy |
| 94 | ARRAY-2235 - Splitting Imports: Child files need to be cleaned up (New) | 1d | 2012-01-25 A | 2012-01-25 A |  |  | KK; Todd; Paul; Quy |
| 95 | ARRAY-2266: Regression Test 2.5.0 on QA tiers | 5d | 2012-01-25 A | 2012-01-31 A | 77, 78, 79, 80 |  | Quy; Systems |
| 96 | ARRAY-1692 - Security vulnerability fix by upgrading struts (New) | 3d | 2012-01-25 A | 2012-01-27 A |  |  | KK; Todd; Paul; Quy |
| 97 | ARRAY-2283 - BDALite: Sizing requirements for all tiers (New) | 1d | 2012-01-25 A | 2012-01-25 A |  |  | Rashmi; Quy; Systems; Xiaopeng; Juli |
| 98 | ARRAY-2271 - QA Test Plan Review (NCI) | 1d | 2012-02-07 A | 2012-02-07 A |  | start no earlier than 2012-02-07 | Quy; Juli; JJ; Deb; Larry |
| 99 | **Iteration M23** | 10d | 2012-02-08 A | 2012-02-21 A | 84 |  |  |
| 100 | ARRAY-2272 - BDALite: Unified target (New) | 2d | 2012-02-08 A | 2012-02-09 A |  |  | Systems; KK; Quy |
| 101 | ARRAY-2104 - BDALite: osgi plugin location (New) | 2d | 2012-02-10 A | 2012-02-13 A | 100 |  | Systems; KK; Quy |
| 102 | ARRAY-1627 - Part 1 of Resumable Uploads - Large Files, Multi-Select, Upload and Cancel | 10d | 2012-02-08 A | 2012-02-21 A |  |  | Todd; Paul; Quy |
| 103 | ARRAY-2310 - Meeting with Architecture Review Board re: Improved Uploads | 1d | 2012-02-15 A | 2012-02-15 A | 86 | start no earlier than 2012-02-15 | Rashmi; Paul; ARB |
| 104 | ARRAY-2311 - Re-run Section 508 compliance scan | 1d | 2012-02-08 A | 2012-02-08 A |  |  | Rashmi |
| 105 | ARRAY-2309 - UAT of large imports by curators (New) | 4d | 2012-02-14 A | 2012-02-17 A |  | start no earlier than 2012-02-14 | Curators; Rashmi |
| 106 | ARRAY-2295 - Patch 2.4.1 source code to point to ncisvn | 2d | 2012-02-14 A | 2012-02-15 A | 101 |  | KK; Quy; Systems |
| 107 | ARRAY-2312 - Bug triage | 3d | 2012-02-08 A | 2012-02-10 A |  |  | Juli; JJ; Quy; Rashmi; Paul |
| 108 | **Iteration M24** | 10d | 2012-02-22 A | 2012-03-06 A | 99 |  |  |
| 109 | TRANSCEND: Single Sign-on: Prototype CAS architecture | 7d | 2012-02-22 A | 2012-03-01 A |  |  | Paul |
| 110 | ARRAY-1627 - Part 2 of Resumable Uploads - Resume | 5d | 2012-02-22 A | 2012-02-28 A |  |  | KK; Quy |
| 111 | ARRAY-1806 - Ensure API works with storage engine SPI | 1d | 2012-02-29 A | 2012-02-29 A | 110 |  | KK; Todd; Quy |
| 112 | ARRAY-1391 - Support API access by Java 1.6 clients | 1d | 2012-03-01 A | 2012-03-01 A | 111 |  | KK; Todd; Ye |
| 113 | Estimate effort to upgrade to caGrid 1.4 or 1.5 (New) | 2d | 2012-03-02 A | 2012-03-05 A | 112 |  | KK; Todd; Quy |
| 114 | TRANSCEND: Automatic Refresh: Design API and logging | 2d | 2012-03-02 A | 2012-03-05 A | 109 |  | Todd; Quy; Paul |
| 115 | TRANSCEND: Single Sign-on: Demonstrate EJB CAS authentication in Prototype | 1d | 2012-02-22 A | 2012-02-22 A |  |  | Todd; Paul; Quy |
| 116 | Bug Fixes: ARRAY-2329,1609,1622,2129,2071 | 1d | 2012-03-06 A | 2012-03-06 A | 113 |  | KK; Todd; Quy |
| 117 | Demo large imports | 1d | 2012-02-22 A | 2012-02-22 A |  |  | Rashmi |
| 118 | UAT of large imports by curators (Continued) | 4d | 2012-02-29 A | 2012-03-05 A | 110 | start no earlier than 2012-02-14 | Curators; Rashmi |
| 119 | **Improved Uploads** | 20d | 2012-03-07 A | 2012-04-03 A | 108 |  |  |
| 120 | ARRAY-1627 - Part 3 of Resumable Uploads (chunked upload/resume) | 20d | 2012-03-07 A | 2012-04-03 A |  |  | KK; Winston |
| 121 | ARRAY-2267 - Document any restrictions/assumptions for large data upload/import/download/export. | 3d | 2012-03-07 A | 2012-03-09 A |  |  | Winston |
| 122 | ARRAY-2269 - Document performance requirements for large data upload/import/download/export | 2d | 2012-03-07 A | 2012-03-08 A |  |  | Quy |
| 123 | Demo resumable uploads | 1d | 2012-03-13 A | 2012-03-13 A | 120 |  | Rashmi |
| 124 | UAT of resumable uploads by curators | 2d | 2012-03-13 A | 2012-03-14 A | 120 |  | Curators; Rashmi |
| 125 | **Maintenance** | 43d | 2012-03-07 A | 2012-05-04 A | 108 |  |  |
| 126 | Configure STAGE tier with BDALite and Test (as part of ARRAY-1391 and ARRAY-2419) | 15d | 2012-03-07 A | 2012-03-27 A |  |  | Rashmi; Systems; Quy; Paul |
| 127 | Support for next gen sequencing development by Columbia (Ongoing) | 5d | 2012-03-07 A | 2012-03-13 A |  |  | Rashmi; Columbia |
| 128 | ARRAY-2313 - Support testing by API partners (Ongoing) | 20d | 2012-04-09 A | 2012-05-04 A |  | start no earlier than 2012-04-09 | Rashmi |
| 129 | Bug Fixes (ARRAY-2414,2416) | 5d | 2012-03-26 A | 2012-03-30 A |  | start no earlier than 2012-03-26 | Adam; Winston |
| 130 | Bug Fix for Permissions issue in production (ARRAY-2435) | 5d | 2012-04-06 A | 2012-04-12 A |  | start no earlier than 2012-04-06 | Paul; Quy |
| 131 | **Permissions Model (TRANSCEND)** | 33d | 2012-03-21 A | 2012-05-04 A |  |  |  |
| 132 | ARRAY-1938 - Allow sample search by arbitrary characteristics on Permissions page | 5d | 2012-03-21 A | 2012-04-03 A | 126 |  | Paul; Quy |
| 133 | Demo of Permissions Model to UCSF/TRANSCEND team | 1d | 2012-04-18 A | 2012-04-18 A |  | start no earlier than 2012-04-18 | Rashmi |
| 134 | UAT Support for UCSF - Permissions Model | 5d | 2012-04-30 A | 2012-05-04 A | 133 | start no earlier than 2012-04-30 | UCSF |
| 135 | **Automatic Refresh (TRANSCEND)** | 36d | 2012-03-28 A | 2012-05-16 A | 108 |  |  |
| 136 | ARRAY-2273/1932 - Implement API to return whether experiment was changed in time period | 5d | 2012-03-28 A | 2012-04-03 A | 126 |  | Winston |
| 137 | Integration testing of Automatic Refresh with caIntegrator | 5d | 2012-04-23 A | 2012-04-27 A |  | start no earlier than 2012-04-23 | Winston; Quy; caIntegrator Team |
| 138 | Demo of Automatic Refresh to UCSF/TRANSCEND team | 1d | 2012-05-16 A | 2012-05-16 A | 137 | start no earlier than 2012-05-16 | JP; Shine; Rashmi |
| 140 | ARRAY-1930 - Single sign-on between caArray and caIntegrator | 10d | 2012-04-04 A | 2012-04-19 A | 132, 136 |  | Winston; Adam |
| 141 | Single Sign-on for caIntegrator | 10d | 2012-04-20 A | 2012-05-03 A | 140 |  | Adam; caIntegrator Team |
| 142 | Integration testing of Single sign-on | 30d | 2012-05-04 A | 2012-06-14 | 141 |  | caIntegrator Team; Quy; Adam |
| 143 | Demo of Single Sign-on to UCSF/TRANSCEND team | 4d | 2012-06-15 | 2012-06-20 | 142 |  | caIntegrator Team; Rashmi |
| 144 | QA of Single Sign-on | 4d | 2012-06-15 | 2012-06-20 | 142 |  | Systems Team; Quy |
| 145 | **TRANSCEND Delivery and UAT** | 66d | 2012-04-09 A | 2012-07-09 |  |  |  |
| 146 | Security appscan on STAGE | 6d | 2012-04-09 A | 2012-04-16 A | 126 | start no earlier than 2012-04-09 | Systems Team |
| 147 | Address security vulnerabilities | 3d | 2012-04-17 A | 2012-04-19 A | 146 |  | Winston |
| 148 | Obtain permanent firewall exception for STAGE | 2d | 2012-04-20 A | 2012-04-23 A | 147 |  | Systems Team |
| 149 | Package intermediate deliverables for UAT by UCSF | 15d | 2012-04-18 A | 2012-05-08 A |  | start no earlier than 2012-04-18 | Winston; Jill; Rashmi; Quy |
| 150 | Support UCSF as they do UAT | 50d | 2012-05-01 | 2012-07-09 |  | start no earlier than 2012-05-01 | UCSF; caArray Team |
| 154 | Demo of Audit Trail to UCSF/TRANSCEND team | 1d | 2012-05-16 A | 2012-05-16 A | 153 | start no earlier than 2012-05-16 | Rashmi |
| 155 | **Maintenance** | 55d | 2012-04-09 A | 2012-06-22 |  |  |  |
| 156 | caGrid v1.4 upgrade | 10d | 2012-04-09 A | 2012-04-20 A |  | start no earlier than 2012-04-09 | Todd |
| 157 | caGrid v1.5 upgrade - compile and test | 10d | 2012-04-23 A | 2012-05-04 A | 156 | start no earlier than 2012-04-09 | Todd |
| 158 | caGrid v1.5 upgrade - BDA for local installers | 21d | 2012-05-14 A | 2012-06-11 A | 157 | start no earlier than 2012-05-14 | Todd |
| 159 | caGrid v1.5 upgrade - deployment on NCI tiers | 15d | 2012-06-04 A | 2012-06-22 |  | start no earlier than 2012-06-04 | Rashmi; Systems |
| 160 | **UPT Configurability** | 6d | 2012-05-02 A | 2012-05-09 A |  |  |  |
| 161 | ARRAY-2258 - Test new UPT configurability to disallow caArray user group creation within UPT (New) | 3d | 2012-05-02 A | 2012-05-04 A |  | start no earlier than 2012-05-02 | UPT Team; Quy; Paul |
| 162 | ARRAY-2259 - Update installer to configure UPT to disallow user group creation for caArray within UPT (New) | 3d | 2012-05-07 A | 2012-05-09 A | 161 |  | Paul; Quy |
| 163 | Maintenance and Bug Fixes | 9d | 2012-05-10 A | 2012-05-22 A | 162 |  | Paul; Quy; Winston |
| 166 | Bug Fixes | 9d | 2012-05-23 A | 2012-06-04 A |  |  | Winston; Todd; Paul; Quy |
| 167 | Automated Regression Tests of Beta 1 on QA | 3d | 2012-06-05 A | 2012-06-07 A | 166 |  | Quy |
| 168 | Deployment: Deploy Beta 1 to STAGE. | 1d | 2012-06-08 A | 2012-06-08 A | 167 |  | Systems |
| 169 | Automated Regression Tests of Beta 1 on STAGE | 3d | 2012-06-11 A | 2012-06-13 | 168 |  | Quy |
| 170 | Run security app scan on Beta 1. | 3d | 2012-06-11 | 2012-06-13 | 168 |  | Systems |
| 171 | Installer testing of Beta 1. | 3d | 2012-05-23 A | 2012-05-25 A |  |  | Quy |
| 172 | API testing of Beta 1 on STAGE | 2d | 2012-06-11 A | 2012-06-12 A | 168 |  | Ye Wu |
| 173 | Support Beta 1 testing by API partners. | 5d | 2012-06-11 A | 2012-06-15 A | 168 |  | Rashmi |
| 174 | Deployment: Create skeleton Gforge release package and release notes | 2d | 2012-05-23 A | 2012-05-24 A |  |  | Rashmi |
| 176 | Bug Fixes | 11d | 2012-06-05 A | 2012-06-19 | 166 |  | Rashmi; Winston; Quy |
| 177 | Deployment: Point application to draft release notes | 0.5d | 2012-06-05 A | 2012-06-05 A | 166 |  | Winston |
| 178 | Run security appscan on RC1 on Dev tier | 3d | 2012-06-05 | 2012-06-07 | 166 |  | Systems |
| 179 | Automated Regression Tests of RC1 on QA | 2d | 2012-06-20 | 2012-06-21 | 176 |  | Quy; Jie |
| 180 | Manual and Large Data Regression Tests of RC1 on QA | 2d | 2012-06-22 | 2012-06-25 | 179 |  | Quy; Jie |
| 181 | Installer Testing of RC1 | 2d | 2012-06-26 | 2012-06-27 | 180 |  | Quy; Jie |
| 182 | Deploy RC1 to STAGE. | 1d | 2012-06-26 | 2012-06-26 | 179, 180 |  | Systems |
| 183 | API testing of RC1 on STAGE | 2d | 2012-06-27 | 2012-06-28 | 182 |  | Ye Wu |
| 184 | Run security appscan on RC1 on STAGE | 3d | 2012-06-27 | 2012-06-29 | 182 |  | Systems |
| 185 | Automated Regression Tests of RC1 on STAGE. | 2d | 2012-06-27 | 2012-06-28 | 182 |  | Quy |
| 186 | Support RC1 testing by API partners. | 3d | 2012-06-27 | 2012-06-29 | 182 |  | Rashmi |
| 187 | Deployment: Send Draft release notes to Juli to send to Communications Office | 1d | 2012-06-20 A | 2012-06-20 A | 176, 177 |  | Rashmi |
| 188 | **Release Candidate 2** | 18d | 2012-06-20 | 2012-07-13 |  |  |  |
| 189 | Bug Fixes - only Blockers | 7d | 2012-06-20 | 2012-06-28 | 176, 177 |  | Rashmi; Todd; Winston; Quy |
| 190 | Automated Regression Tests of RC2 on QA | 2d | 2012-06-29 | 2012-07-02 | 189 |  | Quy; Jie |
| 191 | Manual and Large Data Regression Tests of RC2 on QA | 2d | 2012-07-03 | 2012-07-04 | 190 |  | Quy; Jie |
| 192 | Automated Regression Tests of RC2 on QA | 2d | 2012-07-05 | 2012-07-06 | 191 |  | Quy; Jie |
| 193 | Deployment: Deploy RC2 to STAGE. | 2d | 2012-07-09 | 2012-07-10 | 192 |  | Systems |
| 194 | Automated Regression Tests of RC2 on STAGE | 2d | 2012-07-11 | 2012-07-12 | 193 |  | Quy; Jie |
| 195 | API testing of RC2 on STAGE | 2d | 2012-07-11 | 2012-07-12 | 193 |  | Ye Wu |
| 196 | Support RC2 testing by API partners. | 3d | 2012-07-11 | 2012-07-13 | 193 |  | Rashmi |
| 197 | **Documentation** | 175d | 2011-09-14 A | 2012-05-18 A |  |  |  |
| 198 | Documentation: Send User's Guide changes to Jill. | 2d | 2012-05-01 A | 2012-05-02 A |  | start no earlier than 2012-05-01 | Rashmi |
| 199 | ARRAY-2092 - Documentation: Send Installation Guide changes to Jill. | 4d | 2012-05-03 A | 2012-05-08 A | 198 |  | Winston |
| 200 | Documentation: Finish Draft User's Guide. | 4d | 2012-05-03 A | 2012-05-08 A | 198 |  | Jill |
| 201 | Documentation: Review Draft User's Guide. | 2d | 2012-05-09 A | 2012-05-10 A | 200 |  | Rashmi |
| 202 | Documentation: Finish Draft Installation Guide. | 4d | 2012-05-09 A | 2012-05-14 A | 199 |  | Jill |
| 203 | Documentation: Review Draft Installation Guide. | 4d | 2012-05-15 A | 2012-05-18 A | 202 |  | Winston |
| 204 | Documentation: Finish final User's Guide. | 2d | 2011-09-14 A | 2011-09-15 A |  |  | Jill |
| 205 | Documentation: Review final User's Guide. | 1d | 2011-09-16 A | 2011-09-16 A | 204 |  | Rashmi |
| 206 | Documentation: Finish final Installation Guide. | 2d | 2011-09-14 A | 2011-09-15 A |  |  | Jill |
| 207 | Documentation: Review final Installation Guide. | 1d | 2011-09-16 A | 2011-09-16 A | 206 |  | Winston |
| 208 | **Deployment** | 3d | 2012-07-13 | 2012-07-17 |  |  |  |
| 210 | Deployment: Update product landing page | 0.5d | 2012-07-17 | 2012-07-17 | 209 |  | Rashmi |
| 211 | Deployment: QA smoke tests PRODUCTION | 1d | 2012-07-17 | 2012-07-17 | 209 |  | Quy; Jie |
| 212 | Deployment: Juli announces the release to the community | 0.5d | 2012-07-17 | 2012-07-17 | 209 |  | Juli |
| 213 | RELEASE 2.5.0 | 0d | 2012-07-17 | 2012-07-17 | 208 |  |  |
| 215 | NOTE: New items identified during the course of the contract are highlighted in yellow | 0d | 2011-08-03 | 2011-08-03 |  |  |  |
| 216 | NOTE: External dependencies are in Red in the Resource Names column | 0d | 2011-08-03 | 2011-08-03 |  |  |  |

Removed: 41 External Dependency: AntHill Pro 3 Tracks set up by Systems team (ARRAY-1968); 42 Jboss 5.1 / Java 6 upgrade - Test 2.5.0 on NCI tiers (ARRAY-1809); 44 Split imports into multiple transactions (ARRAY-1403); 45 Resumable uploads (ARRAY-1899, ARRAY-1627); 47 API (CQL) changes to account for file system storage (ARRAY-1806, ARRAY-1391); 50 PRODUCT BACKLOG (rough LOEs); 51 Grid Security (TRANSCEND); 52 ARRAY-1463 - Login with caGrid account; 53 ARRAY-1928 - Migrate CSM to Grid accounts; 54 ARRAY-1353 - Grid authentication in remote Java API; 55 ARRAY-1462 - Installer/build infrastructure for secure Grid; 56 ARRAY-1929 - Grid Grouper (NICE TO HAVE); 57 ARRAY-1472 - Bulk migration of LDAP to Grid (NICE TO HAVE); 59 ARRAY-1930; 63 ARRAY-1932 - Publish log; 64 File-level permissions for role-based security (TRANSCEND); 65 ARRAY-1938; 66 Maintenance and Bug Fixes; 67 Collaborator Group Defect; 68 Expand unparsed file types (NICE TO HAVE); 69 IE 8 UI bugs (NICE TO HAVE); 70 MAGE-TAB v1.1 support (NICE TO HAVE); 71 Clean up duplicate terms (NICE TO HAVE); 72 Import verification to prevent unintentional biomaterial/term creation (NICE TO HAVE); 73 Prevent multiple hybs to 1 file association (NICE TO HAVE); 74 Fix SDRF export of multiple derived data file columns (NICE TO HAVE); 75 Fix LSIDs for unparsed array designs (NICE TO HAVE); 76 Release Overhead for TRANSCEND release; 77 Bug fixes; 78 Deployment overhead

Changed:

| ID | Task | Start | Finish | Duration | Complete | Total float | Predecessors | Other |
| --- | --- | --- | --- | --- | --- | --- | --- | --- |
| 1 | **CAARRAY 2.x** | 2011-08-10 A → 2011-08-03 A (-7d) | 2012-11-05 → 2012-07-17 (-111d) | 324d → 247d | 58% → 87% |  |  |  |
| 2 | **2.4.1** |  | 2011-09-30 → 2011-10-03 (+3d) | 38d → 39d |  |  |  |  |
| 4 | caArray Importer: Regression test on local tier (New) |  |  |  |  |  |  | was named caArray Importer: Regression test on local tier |
| 5 | caArray Importer: Test import on local tier (New) |  |  |  |  |  |  | was named caArray Importer: Test import on local tier |
| 8 | Write Grid client to get expt and hyb counts for Ken Buetow (New) |  |  |  |  |  |  | was named Write Grid client to get expt and hyb counts for Ken Buetow |
| 9 | Write and test QTP automated script to load TCGA data (New) |  |  |  |  |  |  | was named Write and test QTP automated script to load TCGA data |
| 12 | Decide on solution to TCGA data load issue (New) |  |  |  |  |  |  | was named Decide on solution to TCGA data load issue |
| 16 | **2.4.1 Deployment** |  | 2011-09-30 → 2011-10-03 (+3d) | 13d → 14d |  |  |  |  |
| 21 | App Scan on STAGE |  |  |  |  |  |  | resources none → Systems |
| 23 | Deploy to PRODUCTION | 2011-09-26 A → 2011-09-27 A (+1d) | 2011-09-30 A → 2011-10-03 A (+3d) |  |  |  |  | resources none → Systems |
| 25 | **2.5.0** |  | 2012-04-09 → 2012-07-17 (+99d) | 149d → 217d | 43% → 82% |  |  | was named 2.5.0 (rough LOEs); resources Andrew; Quy; Rashmi → none |
| 28 | BDALite: Migrate caArray build from Ivy to Nexus (ARRAY-2073) (New) |  |  |  |  |  |  | was named BDALite: Migrate caArray build from Ivy to Nexus (ARRAY-2073); resources none → Systems; KK |
| 30 | BDALite: Migrate BDA build from Ivy to Nexus (ARRAY-2085) (New) |  |  |  |  |  |  | was named BDALite: Migrate BDA build from Ivy to Nexus (ARRAY-2085); resources none → Systems; KK |
| 37 | Xenoline: Data analysis and meetings (New) |  |  |  |  |  |  | was named Xenoline: Data analysis and meetings |
| 38 | TRANSCEND: Requirements meetings and test data set-up |  | 2011-11-24 A |  | 50% → 100% | 95d → none |  |  |
| 39 | Jboss 5.1 / Java 6 upgrade - Test 2.4.x to 2.5.0 migration path (ARRAY-2126, ARRAY-2127) |  | 2011-11-24 A |  | 50% → 100% | 92.5d → none |  |  |
| 41 | Bug fixes (ARRAY-2165,2166) |  | 2011-12-05 → 2011-11-29 A (-6d) | 7d → 3d | 36% → 100% | 90d → none | 39 → none | was named Fix bugs discovered during regression testing (ARRAY-2165,2166,2167,2168,2169); resources none → KK |
| 42 | BDALite: AHP 3 prerequisite: Standalone liquibase upgrades (ARRAY-2105) (New) | 2011-11-25 → 2011-11-30 A (+5d) | 2011-12-05 → 2011-12-06 A (+1d) | 7d → 5d | 0% → 100% | 0d → none | 36 → 41 | was named BDALite: AHP 3 prerequisite: Standalone liquibase upgrades (ARRAY-2105); resources none → KK; Systems |
| 139 | **Single Sign-on (TRANSCEND)** | 2012-06-05 → 2012-04-04 A (-62d) | 2012-07-02 → 2012-06-20 (-12d) | 20d → 56d | 0% → 60% | 0d → 19d | Grid Security (TRANSCEND) → none |  |
| 151 | **Audit Trail (TRANSCEND)** | 2012-07-03 → 2012-04-18 A (-76d) | 2012-07-30 → 2012-05-16 A (-75d) | 20d → 21d | 0% → 100% | 0d → none | 139 → none |  |
| 152 | ARRAY-1931 - Sample deletions and data imports | 2012-07-03 → 2012-04-18 A (-76d) | 2012-07-16 → 2012-04-27 A (-80d) | 10d → 8d | 0% → 100% | 0d → none |  | constraint none → start no earlier than 2012-04-18; resources none → Winston; Quy |
| 153 | ARRAY-1933 - Log visibility to Data Owner | 2012-07-17 → 2012-04-30 A (-78d) | 2012-07-23 → 2012-05-03 A (-81d) | 5d → 4d | 0% → 100% | 0d → none |  | resources none → Winston; Quy |
| 164 | **Beta 1** | 2011-12-06 → 2012-05-23 A (+169d) | 2011-12-12 → 2012-06-15 (+186d) | 5d → 18d | 0% → 91% | 85d → 22d | 42 → 163 | was named Allow user to point to files rather than uploading/transferring (ARRAY-2005) |
| 165 | Backup and replication for file system - NCI tiers and local installer documentation (ARRAY-1809) | 2012-02-14 → 2012-05-23 A (+99d) | 2012-02-20 → 2012-06-04 A (+105d) | 5d → 9d | 0% → 100% | 35d → none | Resumable uploads (ARRAY-1899, ARRAY-1627) → none | resources none → Paul; Winston; Todd; Quy |
| 175 | **Release Candidate 1** | 2012-02-21 → 2012-06-05 A (+105d) | 2012-03-26 → 2012-06-29 (+95d) | 25d → 19d | 0% → 32% | 0d → 12d | API (CQL) changes to account for file system storage (ARRAY-1806, ARRAY-1391) → none | was named Bug fixes |
| 209 | Deployment: Deploy GA to PRODUCTION | 2012-03-27 → 2012-07-13 (+108d) | 2012-04-09 → 2012-07-16 (+98d) | 10d → 2d |  |  | 175 → 194 | was named Deployment overhead; resources none → Systems |
